# 프로젝트 일정 관리 v1.7 20150813

Schedule from MS Project, 2015-03-23 to 2016-01-29, A marks actual dates.

## Calendars

- 표준: Mon-Fri 08:00-12:00, 13:00-17:00; Sat-Sun off. Exceptions (off unless hours are given): 2015-09-26 to 2015-09-28 (추석), 2015-10-03 (개천절), 2015-10-09 (한글날), 2015-12-25 (성탄절), 2016-01-01 (신정).

## Resources

| Resource |
| --- |
| 김재환 |
| 이민수 |
| 정종석 |
| 김태경 |
| 제타소프트 |

## Schedule

| ID | WBS | Task | Type | Duration | Start | Finish | Complete | Remaining | Actual start | Resources | Work | Actual work |
| --- | --- | --- | --- | --- | --- | --- | --- | --- | --- | --- | --- | --- |
| 1 | 1 | **임대형 그룹웨어 구축 프로젝트** |  | 221d | 2015-03-23 A | 2016-01-29 | 49% | 111.89d |  |  | 8572h | 5225.44h |
| 2 | 1.1 | **착수** |  | 31d | 2015-03-23 A | 2015-05-03 A | 100% |  |  |  | 1472h | 1472h |
| 3 | 1.1.1 | **준비 및 계획** |  | 31d | 2015-03-23 A | 2015-05-03 A | 100% |  |  |  | 1472h | 1472h |
| 4 | 1.1.1.1 | 개발환경 설정 | manual | 16d | 2015-03-23 A | 2015-04-12 A | 100% |  |  | 김재환; 이민수; 정종석 | 384h | 384h |
| 5 | 1.1.1.2 | Framework 선정 | manual | 11d | 2015-03-23 A | 2015-04-05 A | 100% |  |  | 정종석 | 88h | 88h |
| 6 | 1.1.1.3 | UI Component 선정 | manual | 11d | 2015-03-30 A | 2015-04-12 A | 100% |  |  | 이민수 | 88h | 88h |
| 7 | 1.1.1.4 | 웹메일 솔루션 검토 | manual | 11d | 2015-03-30 A | 2015-04-12 A | 100% |  |  | 김재환; 이민수; 정종석 | 264h | 264h |
| 8 | 1.1.1.5 | 그룹웨어 솔루션 벤치마킹 | manual | 16d | 2015-04-13 A | 2015-05-03 A | 100% |  |  | 김재환; 이민수; 정종석 | 384h | 384h |
| 9 | 1.1.1.6 | 웹메일 솔루션 BMT | manual | 11d | 2015-04-20 A | 2015-05-03 A | 100% |  |  | 김재환; 이민수; 정종석 | 264h | 264h |
| 10 | 1.2 | **분석** |  | 21d | 2015-03-30 A | 2015-04-26 A | 100% |  |  |  | 768h | 768h |
| 11 | 1.2.1 | **구현 범위 산정** |  | 21d | 2015-03-30 A | 2015-04-26 A | 100% |  |  |  | 768h | 768h |
| 12 | 1.2.1.1 | 대표 기능 선정 | manual | 11d | 2015-03-30 A | 2015-04-12 A | 100% |  |  | 김재환; 이민수; 정종석 | 264h | 264h |
| 13 | 1.2.1.2 | 세부 기능 선정 | manual | 21d | 2015-03-30 A | 2015-04-26 A | 100% |  |  | 김재환; 이민수; 정종석 | 504h | 504h |
| 14 | 1.3 | **설계** |  | 51d | 2015-04-13 A | 2015-06-21 A | 100% |  |  |  | 1496h | 1496h |
| 15 | 1.3.1 | 프로세스 설계 | manual | 11d | 2015-04-13 A | 2015-04-26 A | 100% |  |  | 김재환; 이민수; 정종석 | 176h | 176h |
| 16 | 1.3.2 | **상세설계** |  | 46d | 2015-04-20 A | 2015-06-21 A | 100% |  |  |  | 1320h | 1320h |
| 17 | 1.3.2.1 | 메뉴구성 설계 | manual | 6d | 2015-04-20 A | 2015-04-26 A | 100% |  |  | 김재환; 이민수; 정종석 | 144h | 144h |
| 18 | 1.3.2.2 | 화면 구성 설계 | manual | 11d | 2015-04-27 A | 2015-05-10 A | 100% |  |  | 김재환; 이민수; 정종석 | 264h | 264h |
| 19 | 1.3.2.3 | 코드 쳬계 확립 | manual | 11d | 2015-04-27 A | 2015-05-10 A | 100% |  |  | 이민수 | 88h | 88h |
| 20 | 1.3.2.4 | 공통 모듈 설계 | manual | 11d | 2015-05-04 A | 2015-05-17 A | 100% |  |  | 정종석 | 88h | 88h |
| 21 | 1.3.2.5 | 데이터베이스 설계 | manual | 16d | 2015-05-04 A | 2015-05-24 A | 100% |  |  | 김태경; 이민수; 정종석 | 384h | 384h |
| 22 | 1.3.2.6 | 세부 데이터베이스 설셰 | manual | 11d | 2015-05-25 A | 2015-06-07 A | 100% |  |  | 김태경; 이민수; 정종석 | 264h | 264h |
| 23 | 1.3.2.7 | 사용자 권한 설계 | manual | 11d | 2015-06-08 A | 2015-06-21 A | 100% |  |  | 김태경 | 88h | 88h |
| 24 | 1.4 | **구현** |  | 167d | 2015-05-04 | 2015-12-24 | 32% | 113.32d | 2015-05-25 |  | 3948h | 1489.44h |
| 25 | 1.4.1 | 공통 모듈 구현 | manual | 25d | 2015-05-25 A | 2015-06-26 A | 100% |  |  | 김태경; 이민수; 정종석 | 588h | 588h |

| ID | WBS | Task | Type | Duration | Start | Finish | Predecessors | Complete | Remaining | Actual start | Resources | Work | Actual work |
| --- | --- | --- | --- | --- | --- | --- | --- | --- | --- | --- | --- | --- | --- |
| 26 | 1.4.2 | **단위 업무 구현** |  | 127d | 2015-06-29 A | 2015-12-24 |  | 28% | 91.28d |  |  | 3360h | 901.44h |
| 27 | 1.4.2.1 | **일정관리** |  | 28d | 2015-06-29 A | 2015-08-05 |  | 99% | 0.05d |  |  | 440h | 439.2h |
| 28 | 1.4.2.1.1 | 일정관리 기본 레이아웃 | manual | 28d | 2015-06-29 A | 2015-08-05 A |  | 100% |  |  | 정종석 | 200h | 200h |
| 29 | 1.4.2.1.2 | 캘린더 기본 | manual | 25d | 2015-06-29 A | 2015-07-31 A |  | 100% |  |  | 정종석 | 184h | 184h |
| 30 | 1.4.2.1.3 | 공유캘린더 | manual | 3d | 2015-08-03 A | 2015-08-05 A |  | 100% |  |  | 정종석 | 24h | 24h |
| 31 | 1.4.2.1.4 | 반복일정 | manual | 2d | 2015-08-04 A | 2015-08-05 |  | 95% | 0.1d |  | 정종석 | 16h | 15.2h |
| 32 | 1.4.2.1.5 | 할일 | manual | 2d | 2015-08-04 A | 2015-08-05 A |  | 100% |  |  | 정종석 | 16h | 16h |
| 33 | 1.4.2.2 | **관리자** |  | 127d | 2015-06-29 A | 2015-12-24 |  | 36% | 81.24d |  |  | 960h | 340.8h |
| 34 | 1.4.2.2.1 | **환경설정** |  | 43d | 2015-06-29 A | 2015-08-26 |  | 70% | 12.9d |  |  | 280h | 193.6h |
| 35 | 1.4.2.2.1.1 | 공통코드 관리 | manual | 10d | 2015-06-29 A | 2015-07-10 A |  | 100% |  |  | 이민수 | 80h | 80h |
| 36 | 1.4.2.2.1.2 | 조직 관리 | manual | 16d | 2015-07-13 A | 2015-08-03 |  | 95% | 0.8d |  | 이민수 | 120h | 113.6h |
| 37 | 1.4.2.2.1.3 | 메뉴 관리 및 권한 | manual | 10d | 2015-08-13 | 2015-08-26 |  |  |  |  | 정종석 | 80h |  |
| 38 | 1.4.2.2.2 | **커뮤니티** |  | 35d | 2015-06-29 A | 2015-08-14 |  | 75% | 8.75d |  |  | 160h | 120h |
| 39 | 1.4.2.2.2.1 | 기본 설정 | manual | 10d | 2015-06-29 A | 2015-07-10 A | 25 | 100% |  |  | 김태경 | 80h | 80h |
| 40 | 1.4.2.2.2.2 | 커뮤니티 개설/폐쇄 관리 | manual | 5d | 2015-07-13 A | 2015-07-17 A |  | 100% |  |  | 김태경 | 40h | 40h |
| 41 | 1.4.2.2.2.3 | 설문 관리 | manual | 5d | 2015-08-10 | 2015-08-14 |  |  |  |  | 김태경 | 40h |  |
| 42 | 1.4.2.2.3 | **일정관리** |  | 13d | 2015-07-27 | 2015-08-12 |  | 48% | 6.76d | 2015-08-06 |  | 40h | 19.2h |
| 43 | 1.4.2.2.3.1 | 캘린더 관리 | manual | 2d | 2015-08-06 | 2015-08-07 |  |  |  |  | 정종석 | 16h |  |
| 44 | 1.4.2.2.3.2 | 공휴일 관리 | manual | 3d | 2015-08-10 A | 2015-08-12 |  | 80% | 0.6d |  | 정종석 | 24h | 19.2h |
| 45 | 1.4.2.2.4 | **전자결재** |  | 97d | 2015-08-10 A | 2015-12-24 |  | 3% | 93.66d |  |  | 232h | 8h |
| 46 | 1.4.2.2.4.1 | 기본 설정 | manual | 5d | 2015-08-10 A | 2015-08-14 |  | 10% | 4.5d |  | 이민수 | 40h | 4h |
| 47 | 1.4.2.2.4.2 | 결재 양식 관리 | manual | 10d | 2015-08-17 A | 2015-08-28 |  | 5% | 9.5d |  | 이민수 | 80h | 4h |
| 48 | 1.4.2.2.4.3 | 문서번호 채번 규칙 설정 | manual | 3d | 2015-08-31 | 2015-09-02 |  |  |  |  | 이민수 | 24h |  |
| 49 | 1.4.2.2.4.4 | 보안등급 관리 | manual | 1d | 2015-09-03 | 2015-09-03 |  |  |  |  | 이민수 | 8h |  |
| 50 | 1.4.2.2.4.5 | 보존연한 관리 | manual | 1d | 2015-09-04 | 2015-09-04 |  |  |  |  | 이민수 | 8h |  |
| 51 | 1.4.2.2.4.6 | 부서 문서함 관리 | manual | 5d | 2015-12-14 | 2015-12-18 |  |  |  |  | 이민수 | 40h |  |
| 52 | 1.4.2.2.4.7 | 문서함 이동 / 문서 이동 | manual | 4d | 2015-12-21 | 2015-12-24 |  |  |  |  | 이민수 | 32h |  |
| 53 | 1.4.2.2.5 | 자원예약 관리 | manual | 4d | 2015-10-08 | 2015-10-14 |  |  |  |  | 정종석 | 32h |  |

| ID | WBS | Task | Type | Duration | Start | Finish | Complete | Remaining | Resources | Work | Actual work |
| --- | --- | --- | --- | --- | --- | --- | --- | --- | --- | --- | --- |
| 54 | 1.4.2.2.6 | **게시판** |  | 58d | 2015-08-31 | 2015-11-20 |  |  |  | 216h |  |
| 55 | 1.4.2.2.6.1 | 기본 설정 | manual | 5d | 2015-09-07 | 2015-09-11 |  |  | 김태경 | 40h |  |
| 56 | 1.4.2.2.6.2 | 전사 게시판 관리 | manual | 10d | 2015-09-14 | 2015-09-25 |  |  | 김태경 | 80h |  |
| 57 | 1.4.2.2.6.3 | 팝업 공지 관리 | manual | 5d | 2015-09-28 | 2015-10-02 |  |  | 김태경 | 40h |  |
| 58 | 1.4.2.2.6.4 | 업무일지 대상자 관리 | manual | 2d | 2015-10-22 | 2015-10-23 |  |  | 정종석 | 16h |  |
| 59 | 1.4.2.2.6.5 | 문서관리 권한 설정 | manual | 5d | 2015-10-26 | 2015-10-30 |  |  | 김태경 | 40h |  |
| 60 | 1.4.2.3 | **커뮤니티** |  | 35d | 2015-07-20 A | 2015-09-04 | 37% | 21.96d |  | 208h | 89.44h |
| 61 | 1.4.2.3.1 | 커뮤니티 메인 | manual | 11d | 2015-07-20 A | 2015-08-03 | 98% | 0.22d | 김태경 | 88h | 86.24h |
| 62 | 1.4.2.3.2 | 커뮤니티 기본 게시판 | manual | 4d | 2015-08-04 A | 2015-08-07 | 10% | 3.6d | 김태경 | 32h | 3.2h |
| 63 | 1.4.2.3.3 | 전자설문 | manual | 15d | 2015-08-17 | 2015-09-04 |  |  | 김태경 | 88h |  |
| 64 | 1.4.2.4 | 임직원조회 | manual | 4d | 2015-08-04 A | 2015-08-07 A | 100% |  | 이민수 | 32h | 32h |
| 65 | 1.4.2.5 | 자원예약 | manual | 24d | 2015-09-03 | 2015-10-07 |  |  | 정종석 | 192h |  |
| 66 | 1.4.2.6 | **전자결재** |  | 73d | 2015-09-07 | 2015-12-18 |  |  |  | 544h |  |
| 67 | 1.4.2.6.1 | 양식 선택 | manual | 5d | 2015-09-07 | 2015-09-11 |  |  | 이민수 | 40h |  |
| 68 | 1.4.2.6.2 | 문서 상신 - 기본 설정 | manual | 5d | 2015-09-14 | 2015-09-18 |  |  | 이민수 | 40h |  |
| 69 | 1.4.2.6.3 | 문서 상신 - 결재선 지정 | manual | 5d | 2015-09-21 | 2015-09-25 |  |  | 이민수 | 40h |  |
| 70 | 1.4.2.6.4 | 문서 상신 - 수신처 지정 | manual | 3d | 2015-09-30 | 2015-10-02 |  |  | 이민수 | 24h |  |
| 71 | 1.4.2.6.5 | 문서 상신 - 문서 정보 | manual | 5d | 2015-10-12 | 2015-10-16 |  |  | 이민수 | 40h |  |
| 72 | 1.4.2.6.6 | 문서 상신 처리 | manual | 5d | 2015-10-19 | 2015-10-23 |  |  | 이민수 | 40h |  |
| 73 | 1.4.2.6.7 | 문서 결재 처리 | manual | 5d | 2015-10-26 | 2015-10-30 |  |  | 이민수 | 40h |  |
| 74 | 1.4.2.6.8 | 문서 접수 처리 | manual | 5d | 2015-11-02 | 2015-11-06 |  |  | 이민수 | 40h |  |
| 75 | 1.4.2.6.9 | 개인결재 목록 | manual | 10d | 2015-11-09 | 2015-11-20 |  |  | 이민수 | 80h |  |
| 76 | 1.4.2.6.10 | 부서결재 목록 | manual | 10d | 2015-11-23 | 2015-12-04 |  |  | 이민수 | 80h |  |
| 77 | 1.4.2.6.11 | 개인문서함 목록 | manual | 10d | 2015-12-07 | 2015-12-18 |  |  | 이민수 | 80h |  |

| ID | WBS | Task | Type | Duration | Start | Finish | Resources | Work |
| --- | --- | --- | --- | --- | --- | --- | --- | --- |
| 78 | 1.4.2.7 | **게시판** |  | 29d | 2015-10-05 | 2015-11-13 |  | 408h |
| 79 | 1.4.2.7.1 | 업무관리 | manual | 19d | 2015-10-05 | 2015-10-30 | 김태경 | 152h |
| 80 | 1.4.2.7.2 | 제안제도 | manual | 5d | 2015-10-26 | 2015-10-30 | 정종석 | 40h |
| 81 | 1.4.2.7.3 | 사내도서관 | manual | 5d | 2015-11-02 | 2015-11-06 | 정종석 | 40h |
| 82 | 1.4.2.7.4 | 문서관리 | manual | 10d | 2015-11-02 | 2015-11-13 | 김태경 | 80h |
| 83 | 1.4.2.7.5 | 업무일지 | manual | 7d | 2015-10-15 | 2015-10-23 | 정종석 | 56h |
| 84 | 1.4.2.7.6 | 고객사관리 | manual | 5d | 2015-08-27 | 2015-09-02 | 정종석 | 40h |
| 85 | 1.4.2.8 | 전자우편 | manual | 30d | 2015-10-05 | 2015-11-16 | 제타소프트 | 240h |
| 86 | 1.4.2.9 | **통계** |  | 10d | 2015-11-16 | 2015-11-27 |  | 120h |
| 87 | 1.4.2.9.1 | 근태 | manual | 5d | 2015-11-16 | 2015-11-20 | 김태경 | 40h |
| 88 | 1.4.2.9.2 | 업무일지 | manual | 5d | 2015-11-23 | 2015-11-27 | 김태경 | 40h |
| 89 | 1.4.2.9.3 | 환경설정 | manual | 5d | 2015-11-09 | 2015-11-13 | 정종석 | 40h |
| 90 | 1.4.2.10 | 마이페이지 | manual | 5d | 2015-11-16 | 2015-11-20 | 정종석 | 40h |
| 91 | 1.4.2.11 | 메인페이지 | manual | 10d | 2015-11-23 | 2015-12-04 | 정종석 | 80h |
| 92 | 1.4.2.12 | 다국어 처리 | manual | 4d | 2015-12-21 | 2015-12-24 | 김태경; 이민수; 정종석 | 96h |
| 93 | 1.5 | **시험** |  | 19d | 2015-12-28 | 2016-01-22 |  | 264h |
| 94 | 1.5.1 | **단위 테스트** |  | 9d | 2015-12-28 | 2016-01-08 |  | 264h |
| 95 | 1.5.1.1 | 단위 테스트 계획 수립 | manual | 5d | 2015-11-30 | 2015-12-04 | 김태경 | 40h |
| 96 | 1.5.1.2 | 단위 테스트 | manual | 5d | 2015-12-07 | 2015-12-11 | 김태경; 정종석 | 80h |
| 97 | 1.5.1.3 | **통합 테스트** |  | 10d | 2015-12-14 | 2015-12-28 |  | 144h |
| 98 | 1.5.1.3.1 | 통합 테스트 계획 수립 | manual | 5d | 2015-12-14 | 2015-12-18 | 김태경; 정종석 | 80h |
| 99 | 1.5.1.3.2 | 통합 테스트 | manual | 4d | 2015-12-21 | 2015-12-24 | 김태경; 정종석 | 64h |
| 100 | 1.6 | **전개** |  | 24d | 2015-12-28 | 2016-01-29 |  | 624h |
| 101 | 1.6.1 | **운영 환경 구축** |  | 24d | 2015-12-28 | 2016-01-29 |  | 624h |
| 102 | 1.6.1.1 | 시범운영 | manual | 5d | 2016-01-04 | 2016-01-08 | 김태경; 이민수; 정종석 | 120h |
| 103 | 1.6.1.2 | 안정화 | manual | 15d | 2016-01-11 | 2016-01-29 | 김태경; 이민수; 정종석 | 360h |
| 104 | 1.6.1.3 | 운영 서버 설정 | manual | 5d | 2015-12-28 | 2016-01-04 | 김태경; 이민수; 정종석 | 120h |
| 105 | 1.6.1.4 | 신규 서비스 오픈 | manual | 1d | 2016-01-04 | 2016-01-04 | 김태경; 이민수; 정종석 | 24h |
